# 4662/4663 CFe拓展坞 DVT阶段

How a schedule from a web Gantt chart changed from version to version. A marks actual dates.

## Version 1 (saved 2024-08-13)

| ID | Task | Duration | Start | Finish | Predecessors |
| --- | --- | --- | --- | --- | --- |
| 2 | 供应商完成样品预扫 | 1d | 2024-08-07 | 2024-08-07 |  |
| 3 | 打样第二版PCBＡ样品 | 10d | 2024-08-08 | 2024-08-21 | 2 |
| 4 | 电子料备料 | 10d | 2024-08-08 | 2024-08-21 |  |
| 5 | 样品验收测试 | 2d | 2024-08-19 | 2024-08-20 |  |
| 6 | 开模前样品评审 | 1d | 2024-08-21 | 2024-08-21 |  |
| 7 | 开模 T0 样 | 11d | 2024-08-22 | 2024-09-05 |  |
| 8 | PCBA贴片 T0 | 11d | 2024-08-22 | 2024-09-05 |  |
| 9 | 包装打样 | 5d | 2024-08-30 | 2024-09-05 |  |
| 10 | 试产样 质量验收测试 | 4d | 2024-09-06 | 2024-09-11 |  |
| 11 | 产前样签样 | 1d | 2024-09-12 | 2024-09-12 |  |
| 12 | 包装完整样品签样 | 1d | 2024-09-12 | 2024-09-12 |  |
| 13 | 包装制作 | 6d | 2024-09-13 | 2024-09-20 |  |
| 14 | 首批量产 | 11d | 2024-09-13 | 2024-09-27 |  |
| 15 | 成品入仓 | 3d | 2024-09-30 | 2024-10-02 |  |
| 16 | 渲染需求 | 2d | 2024-08-12 | 2024-08-13 |  |
| 17 | 完成主图拍摄渲染 | 4d | 2024-08-15 | 2024-08-20 |  |
| 18 | 包装设计 | 7d | 2024-08-21 | 2024-08-29 |  |
| 19 | 输出定价定量资料 | 2d | 2024-09-02 | 2024-09-03 |  |
| 20 | 完成定价审批 | 1d | 2024-09-04 | 2024-09-04 |  |
| 21 | 各区域认证费用确认 | 1d | 2024-09-04 | 2024-09-04 |  |
| 22 | 卖点宣讲会 | 1d | 2024-09-05 | 2024-09-05 |  |
| 23 | 确认各区域销售ＭＯＱ | 1d | 2024-09-05 | 2024-09-05 |  |
| 24 | 销售区域确认 | 1d | 2024-09-06 | 2024-09-06 |  |
| 25 | 产品中英文案 | 5d | 2024-09-09 | 2024-09-13 |  |
| 26 | 中台信息录入 | 1d | 2024-09-16 | 2024-09-16 |  |

## Version 2 (saved 2024-08-15)

Last finish 2024-10-02 → 2024-11-14 (+43d). Complete tasks 0 → 1.

Added:

| ID | Task | Duration | Start | Finish | Predecessors |
| --- | --- | --- | --- | --- | --- |
| 4 | 第二版样品验收测试 | 8d | 2024-08-27 | 2024-09-05 | 3 |
| 6 | 外观评审 | 2d | 2024-08-27 | 2024-08-28 | 3 |
| 12 | 结构物料配齐 | 11d | 2024-10-25 | 2024-11-08 | 11 |
| 17 | 说明书文案 | 3d | 2024-08-29 | 2024-09-02 |  |
| 19 | 包装说明书设计 | 7d | 2024-09-06 | 2024-09-16 | 18, 17 |
| 20 | 包装说明书打样 | 5d | 2024-09-17 | 2024-09-23 | 19 |
| 21 | 输出完整报价，定价定量资料 | 2d | 2024-09-24 | 2024-09-25 | 20, 25 |
| 29 | 中、美、欧、英、加，认证 | 20d | 2024-08-29 | 2024-09-25 | 6 |
| 30 | 补充地区认证 | 10d | 2024-10-01 | 2024-10-14 | 26 |

Removed: 5 样品验收测试; 9 包装打样; 12 包装完整样品签样; 18 包装设计; 19 输出定价定量资料

Changed:

| ID | Task | Start | Finish | Duration | Complete | Predecessors |
| --- | --- | --- | --- | --- | --- | --- |
| 2 | 供应商完成样品预扫 |  |  |  | 0% → 100% |  |
| 3 | 打样第二版PCBＡ样品 |  | 2024-08-21 → 2024-08-26 (+5d) | 10d → 13d |  |  |
| 5 | 电子料备料 | 2024-08-08 → 2024-09-06 (+29d) | 2024-08-21 → 2024-09-25 (+35d) | 10d → 14d |  | none → 4 |
| 7 | 开模前样品评审 | 2024-08-21 → 2024-08-29 (+8d) | 2024-08-21 → 2024-08-29 (+8d) |  |  | none → 6 |
| 8 | 开模 T0 样 | 2024-08-22 → 2024-08-30 (+8d) | 2024-09-05 → 2024-10-08 (+33d) | 11d → 28d |  | none → 7 |
| 9 | PCBA贴片 T0 | 2024-08-22 → 2024-09-26 (+35d) | 2024-09-05 → 2024-10-08 (+33d) | 11d → 9d |  | none → 5 |
| 10 | 试产样 质量验收测试 | 2024-09-06 → 2024-10-09 (+33d) | 2024-09-11 → 2024-10-23 (+42d) | 4d → 11d |  | none → 8, 9 |
| 11 | 产前样签样 | 2024-09-12 → 2024-10-24 (+42d) | 2024-09-12 → 2024-10-24 (+42d) |  |  | none → 10 |
| 13 | 包装制作 | 2024-09-13 → 2024-10-25 (+42d) | 2024-09-20 → 2024-11-01 (+42d) |  |  | none → 11, 20 |
| 14 | 首批量产 | 2024-09-13 → 2024-11-11 (+59d) | 2024-09-27 → 2024-11-11 (+45d) | 11d → 1d |  | none → 12, 13 |
| 15 | 成品入仓 | 2024-09-30 → 2024-11-12 (+43d) | 2024-10-02 → 2024-11-14 (+43d) |  |  | none → 14 |
| 16 | 渲染需求 | 2024-08-12 → 2024-08-29 (+17d) | 2024-08-13 → 2024-08-30 (+17d) |  |  | none → 6 |
| 18 | 完成主图拍摄渲染 | 2024-08-15 → 2024-09-02 (+18d) | 2024-08-20 → 2024-09-05 (+16d) |  |  | none → 16 |
| 22 | 完成定价审批 | 2024-09-04 → 2024-09-26 (+22d) | 2024-09-04 → 2024-09-26 (+22d) |  |  | none → 21 |
| 23 | 各区域认证费用确认 | 2024-09-04 → 2024-09-17 (+13d) | 2024-09-04 → 2024-09-19 (+15d) | 1d → 3d |  |  |
| 24 | 卖点宣讲会 | 2024-09-05 → 2024-09-27 (+22d) | 2024-09-05 → 2024-09-27 (+22d) |  |  | none → 22 |
| 25 | 确认各区域销售ＭＯＱ | 2024-09-05 → 2024-09-20 (+15d) | 2024-09-05 → 2024-09-20 (+15d) |  |  | none → 23 |
| 26 | 销售区域确认 | 2024-09-06 → 2024-09-30 (+24d) | 2024-09-06 → 2024-09-30 (+24d) |  |  | none → 24, 25 |
| 27 | 产品中英文案 | 2024-09-09 → 2024-08-30 (-10d) | 2024-09-13 → 2024-09-05 (-8d) |  |  | none → 7 |
| 28 | 中台信息录入 | 2024-09-16 → 2024-09-06 (-10d) | 2024-09-16 → 2024-09-06 (-10d) |  |  | none → 27 |
