# 4746 hub

How a schedule from a web Gantt chart changed from version to version. A marks actual dates.

## Version 1 (saved 2024-08-09)

| ID | Task | Duration | Start | Finish | Predecessors | Complete |
| --- | --- | --- | --- | --- | --- | --- |
| 2 | 确认预扫问题 | 2d | 2024-08-09 | 2024-08-12 |  |  |
| 3 | 解决预扫问题，提交预扫通过结果 | 3d | 2024-08-13 | 2024-08-15 | 2 |  |
| 4 | ID确认配色方案 | 5d | 2024-08-12 | 2024-08-16 |  |  |
| 5 | 开模 T0 样 | 12d | 2024-08-19 | 2024-09-03 | 4, 3 |  |
| 6 | PCBA贴片 T0 样 | 12d | 2024-08-16 | 2024-09-02 | 3 |  |
| 7 | 产前样质量验收测试 | 1d | 2024-09-04 | 2024-09-04 | 5, 6 | 3% |
| 8 | 产前样签样 | 1d | 2024-09-05 | 2024-09-05 | 7 |  |
| 9 | 首批量产 | 15d | 2024-09-06 | 2024-09-26 | 8 |  |
| 10 | 渲染需求输出 | 2d | 2024-08-19 | 2024-08-20 | 4 |  |
| 11 | 完成渲染图 | 5d | 2024-08-21 | 2024-08-27 | 10 |  |
| 12 | 包装设计 | 5d | 2024-08-28 | 2024-09-03 | 11 |  |
| 13 | 包装打样 | 5d | 2024-09-04 | 2024-09-10 | 12 |  |
| 14 | 包装测试 | 2d | 2024-09-11 | 2024-09-12 | 13 |  |
| 15 | 包装生产 | 5d | 2024-09-13 | 2024-09-19 | 14 |  |
| 16 | 成品入库 | 2d | 2024-09-27 | 2024-09-30 | 9, 15 |  |
| 17 | 输出完全确定的BOM价格 | 1d | 2024-09-13 | 2024-09-13 | 3, 4, 14 |  |
| 18 | 输出中文文案 | 1d | 2024-09-10 | 2024-09-10 |  |  |
| 19 | 翻译英文文案 | 3d | 2024-09-11 | 2024-09-13 | 18 |  |
| 20 | 渲染图、中英文案录入中台 | 1d | 2024-09-16 | 2024-09-16 | 17, 18, 19, 11 |  |
| 21 | 输出定价定量资料 | 1d | 2024-09-16 | 2024-09-16 | 17 |  |
| 22 | 完成定价审批 | 1d | 2024-09-17 | 2024-09-17 | 21, 17 |  |
| 23 | 销售区域认证费用确定 | 1d | 2024-09-09 | 2024-09-09 |  |  |
| 24 | 卖点宣讲会 | 1d | 2024-09-17 | 2024-09-17 | 21 |  |
| 25 | 确认销售区域MOQ | 1d | 2024-09-10 | 2024-09-10 | 23 |  |
| 26 | 确认销售区域，完成定量 | 1d | 2024-09-18 | 2024-09-18 | 24, 25 |  |

## Version 2 (saved 2024-08-12)

Last finish 2024-09-30 → 2024-10-09 (+9d).

Changed:

| ID | Task | Start | Finish | Duration | Predecessors |
| --- | --- | --- | --- | --- | --- |
| 4 | ID确认配色方案 |  | 2024-08-16 → 2024-08-12 (-4d) | 5d → 1d |  |
| 5 | 开模 T0 样 | 2024-08-19 → 2024-08-16 (-3d) | 2024-09-03 → 2024-09-02 (-1d) |  |  |
| 7 | 产前样质量验收测试 | 2024-09-04 → 2024-09-03 (-1d) | 2024-09-04 → 2024-09-03 (-1d) |  |  |
| 8 | 产前样签样 | 2024-09-05 → 2024-09-04 (-1d) | 2024-09-05 → 2024-09-04 (-1d) |  |  |
| 9 | 首批量产 | 2024-09-06 → 2024-09-17 (+11d) | 2024-09-26 → 2024-10-07 (+11d) |  | 8 → 8, 26 |
| 10 | 渲染需求输出 | 2024-08-19 → 2024-08-13 (-6d) | 2024-08-20 → 2024-08-14 (-6d) |  |  |
| 11 | 完成渲染图 | 2024-08-21 → 2024-08-15 (-6d) | 2024-08-27 → 2024-08-21 (-6d) |  |  |
| 12 | 包装设计 | 2024-08-28 → 2024-08-22 (-6d) | 2024-09-03 → 2024-08-28 (-6d) |  |  |
| 13 | 包装打样 | 2024-09-04 → 2024-08-29 (-6d) | 2024-09-10 → 2024-09-04 (-6d) |  |  |
| 14 | 包装测试 | 2024-09-11 → 2024-09-05 (-6d) | 2024-09-12 → 2024-09-06 (-6d) |  |  |
| 15 | 包装生产 | 2024-09-13 → 2024-09-09 (-4d) | 2024-09-19 → 2024-09-20 (+1d) | 5d → 10d |  |
| 16 | 成品入库 | 2024-09-27 → 2024-10-08 (+11d) | 2024-09-30 → 2024-10-09 (+9d) |  |  |
| 17 | 输出完全确定的BOM价格 | 2024-09-13 → 2024-09-09 (-4d) | 2024-09-13 → 2024-09-09 (-4d) |  |  |
| 18 | 输出中文文案 | 2024-09-10 → 2024-08-26 (-15d) | 2024-09-10 → 2024-08-26 (-15d) |  |  |
| 19 | 翻译英文文案 | 2024-09-11 → 2024-08-27 (-15d) | 2024-09-13 → 2024-08-29 (-15d) |  |  |
| 20 | 渲染图、中英文案录入中台 | 2024-09-16 → 2024-09-10 (-6d) | 2024-09-16 → 2024-09-10 (-6d) |  |  |
| 21 | 输出定价定量资料 | 2024-09-16 → 2024-09-10 (-6d) | 2024-09-16 → 2024-09-10 (-6d) |  |  |
| 22 | 完成定价审批 | 2024-09-17 → 2024-09-11 (-6d) | 2024-09-17 → 2024-09-11 (-6d) |  |  |
| 23 | 销售区域认证费用确定 | 2024-09-09 → 2024-08-22 (-18d) | 2024-09-09 → 2024-08-22 (-18d) |  |  |
| 24 | 卖点宣讲会 | 2024-09-17 → 2024-09-11 (-6d) | 2024-09-17 → 2024-09-11 (-6d) |  |  |
| 25 | 确认销售区域MOQ | 2024-09-10 → 2024-08-23 (-18d) | 2024-09-10 → 2024-08-23 (-18d) |  |  |
| 26 | 确认销售区域，完成定量 | 2024-09-18 → 2024-09-12 (-6d) | 2024-09-18 → 2024-09-16 (-2d) | 1d → 3d | 24, 25 → 25, 22 |

## Version 3 (saved 2024-08-13)

Last finish 2024-10-09 → 2024-10-07 (-2d). Complete tasks 0 → 4.

Added:

| ID | Task | Duration | Start | Finish | Predecessors |
| --- | --- | --- | --- | --- | --- |
| 5 | 供应商项目打合 | 1d | 2024-08-14 | 2024-08-14 | 3 |

Changed:

| ID | Task | Start | Finish | Duration | Complete | Predecessors |
| --- | --- | --- | --- | --- | --- | --- |
| 2 | 确认预扫问题 |  |  |  | 0% → 100% |  |
| 3 | 解决预扫问题，提交预扫通过结果 |  | 2024-08-15 → 2024-08-13 (-2d) | 3d → 1d | 0% → 100% |  |
| 4 | ID确认配色方案 |  |  |  | 0% → 100% |  |
| 6 | 开模 T0 样 | 2024-08-16 → 2024-08-15 (-1d) | 2024-09-02 → 2024-08-30 (-3d) |  |  | 4, 3 → 5 |
| 7 | PCBA贴片 T0 样 | 2024-08-16 → 2024-08-15 (-1d) | 2024-09-02 → 2024-08-30 (-3d) |  |  | 3 → 5 |
| 8 | 产前样质量验收测试 | 2024-09-03 → 2024-09-02 (-1d) | 2024-09-03 → 2024-09-02 (-1d) |  |  |  |
| 9 | 产前样签样 | 2024-09-04 → 2024-09-03 (-1d) | 2024-09-04 → 2024-09-03 (-1d) |  |  |  |
| 10 | 首批量产 | 2024-09-17 → 2024-09-13 (-4d) | 2024-10-07 → 2024-10-03 (-4d) |  |  |  |
| 11 | 渲染需求输出 |  | 2024-08-14 → 2024-08-13 (-1d) | 2d → 1d | 0% → 100% |  |
| 12 | 完成渲染图 | 2024-08-15 → 2024-08-14 (-1d) | 2024-08-21 → 2024-08-19 (-2d) | 5d → 4d |  |  |
| 13 | 包装设计 | 2024-08-22 → 2024-08-20 (-2d) | 2024-08-28 → 2024-08-26 (-2d) |  |  |  |
| 14 | 包装打样 | 2024-08-29 → 2024-08-27 (-2d) | 2024-09-04 → 2024-09-02 (-2d) |  |  |  |
| 15 | 包装测试 | 2024-09-05 → 2024-09-03 (-2d) | 2024-09-06 → 2024-09-04 (-2d) |  |  |  |
| 16 | 包装生产 | 2024-09-09 → 2024-09-05 (-4d) | 2024-09-20 → 2024-09-18 (-2d) |  |  |  |
| 17 | 成品入库 | 2024-10-08 → 2024-10-04 (-4d) | 2024-10-09 → 2024-10-07 (-2d) |  |  |  |
| 18 | 输出完全确定的BOM价格 | 2024-09-09 → 2024-09-05 (-4d) | 2024-09-09 → 2024-09-05 (-4d) |  |  |  |
| 21 | 渲染图、中英文案录入中台 | 2024-09-10 → 2024-09-06 (-4d) | 2024-09-10 → 2024-09-06 (-4d) |  |  |  |
| 22 | 输出定价定量资料 | 2024-09-10 → 2024-09-06 (-4d) | 2024-09-10 → 2024-09-06 (-4d) |  |  |  |
| 23 | 完成定价审批 | 2024-09-11 → 2024-09-09 (-2d) | 2024-09-11 → 2024-09-09 (-2d) |  |  |  |
| 25 | 卖点宣讲会 | 2024-09-11 → 2024-09-09 (-2d) | 2024-09-11 → 2024-09-09 (-2d) |  |  |  |
| 27 | 确认销售区域，完成定量 | 2024-09-12 → 2024-09-10 (-2d) | 2024-09-16 → 2024-09-12 (-4d) |  |  |  |

## Version 4 (saved 2024-08-15)

Last finish stays 2024-10-07. Complete tasks 4 → 5.

Changed:

| ID | Task | Start | Finish | Duration | Complete |
| --- | --- | --- | --- | --- | --- |
| 5 | 供应商项目打合 |  |  |  | 0% → 100% |
| 6 | 开模 T0 样 |  | 2024-08-30 → 2024-09-02 (+3d) | 12d → 13d |  |
| 8 | 产前样质量验收测试 | 2024-09-02 → 2024-09-03 (+1d) | 2024-09-02 → 2024-09-03 (+1d) |  |  |
| 9 | 产前样签样 | 2024-09-03 → 2024-09-04 (+1d) | 2024-09-03 → 2024-09-04 (+1d) |  |  |

## Version 5 (saved 2024-08-16)

Last finish stays 2024-10-07.

Changed:

| ID | Task | Finish | Duration |
| --- | --- | --- | --- |
| 7 | PCBA贴片 T0 样 | 2024-08-30 → 2024-09-02 (+3d) | 12d → 13d |
